# Proyect1

Schedule from MS Project, 2015-01-06 to 2016-05-26.

## Calendars

- Estándar: Mon-Fri 09:00-13:00, 15:00-19:00; Sat-Sun off.

## Schedule

| ID | WBS | Task | Type | Duration | Start | Finish | Predecessors | Total slack | Free slack |
| --- | --- | --- | --- | --- | --- | --- | --- | --- | --- |
| 1 | 1 | **Sistema de control de documentos** |  | 363d | 2015-01-06 | 2016-05-26 |  | 0d |  |
| 2 | 1.1 | Inicio del proyecto | milestone | 0d | 2015-01-06 | 2015-01-06 |  | 363d |  |
| 3 | 1.2 | **Análisis documentales** |  | 79d | 2015-01-06 | 2015-04-24 |  | 145d |  |
| 4 | 1.2.1 | **Análisis de procedimientos** |  | 79d | 2015-01-06 | 2015-04-24 |  | 145d |  |
| 5 | 1.2.1.1 | **Sría Admva.** |  | 16d | 2015-01-06 | 2015-01-27 |  | 145d | 0d |
| 6 | 1.2.1.1.1 | Entrevistas con los usuarios |  | 5d | 2015-01-06 | 2015-01-12 |  | 156d |  |
| 7 | 1.2.1.1.2 | Diagramas documentales |  | 16d | 2015-01-06 | 2015-01-27 |  | 145d |  |
| 8 | 1.2.1.1.3 | Mapa de documentos |  | 16d | 2015-01-06 | 2015-01-27 |  | 145d |  |
| 9 | 1.2.1.1.4 | Formatos de servicios |  | 2d | 2015-01-06 | 2015-01-07 |  | 159d |  |
| 10 | 1.2.1.2 | **Bienes y Suministros** |  | 15d | 2015-01-28 | 2015-02-17 | 5 | 145d | 0d |
| 11 | 1.2.1.2.1 | Entrevistas con los usuarios |  | 5d | 2015-01-28 | 2015-02-03 |  | 155d |  |
| 12 | 1.2.1.2.2 | Diagramas documentales |  | 15d | 2015-01-28 | 2015-02-17 |  | 145d |  |
| 13 | 1.2.1.2.3 | Mapa de documentos |  | 15d | 2015-01-28 | 2015-02-17 |  | 145d |  |
| 14 | 1.2.1.2.4 | Formatos de servicios |  | 2d | 2015-01-28 | 2015-01-29 |  | 158d |  |
| 15 | 1.2.1.3 | **Personal** |  | 16d | 2015-02-18 | 2015-03-11 | 10 | 145d | 0d |
| 16 | 1.2.1.3.1 | Entrevistas con los usuarios |  | 5d | 2015-02-18 | 2015-02-24 |  | 156d |  |
| 17 | 1.2.1.3.2 | Diagramas documentales |  | 16d | 2015-02-18 | 2015-03-11 |  | 145d |  |
| 18 | 1.2.1.3.3 | Mapa de documentos |  | 16d | 2015-02-18 | 2015-03-11 |  | 145d |  |
| 19 | 1.2.1.3.4 | Formatos de servicios |  | 2d | 2015-02-18 | 2015-02-19 |  | 159d |  |
| 20 | 1.2.1.4 | **Presupuesto** |  | 16d | 2015-03-12 | 2015-04-02 | 15 | 145d | 0d |
| 21 | 1.2.1.4.1 | Entrevistas con los usuarios |  | 5d | 2015-03-12 | 2015-03-18 |  | 156d |  |
| 22 | 1.2.1.4.2 | Diagramas documentales |  | 16d | 2015-03-12 | 2015-04-02 |  | 145d |  |
| 23 | 1.2.1.4.3 | Mapa de documentos |  | 15d | 2015-03-12 | 2015-04-01 |  | 146d |  |
| 24 | 1.2.1.4.4 | Formatos de servicios |  | 2d | 2015-03-12 | 2015-03-13 |  | 159d |  |

| ID | WBS | Task | Duration | Start | Finish | Predecessors | Total slack | Free slack |
| --- | --- | --- | --- | --- | --- | --- | --- | --- |
| 25 | 1.2.1.5 | **Servicios Generales** | 16d | 2015-04-03 | 2015-04-24 | 20 | 145d | 0d |
| 26 | 1.2.1.5.1 | Entrevistas con los usuarios | 5d | 2015-04-03 | 2015-04-09 |  | 156d |  |
| 27 | 1.2.1.5.2 | Mapa de documentos | 16d | 2015-04-03 | 2015-04-24 |  | 145d |  |
| 28 | 1.2.1.5.3 | SUS | 15d | 2015-04-03 | 2015-04-23 |  | 146d |  |
| 29 | 1.2.1.5.4 | Diagramas documentales | 2d | 2015-04-03 | 2015-04-06 |  | 159d |  |
| 30 | 1.2.2 | **Gestión documental** | 78d | 2015-01-06 | 2015-04-23 |  | 285d |  |
| 31 | 1.2.2.1 | **Sría Admva.** | 15d | 2015-01-06 | 2015-01-26 |  | 348d |  |
| 32 | 1.2.2.1.1 | Entrevistas con los usuarios | 5d | 2015-01-06 | 2015-01-12 |  | 358d |  |
| 33 | 1.2.2.1.2 | Diagramas documentales | 15d | 2015-01-06 | 2015-01-26 |  | 348d |  |
| 34 | 1.2.2.1.3 | Mapa de documentos | 15d | 2015-01-06 | 2015-01-26 |  | 348d |  |
| 35 | 1.2.2.1.4 | Formatos de servicios | 2d | 2015-01-06 | 2015-01-07 |  | 361d |  |
| 36 | 1.2.2.2 | **Bienes y Suministros** | 15d | 2015-01-28 | 2015-02-17 | 5 | 332d |  |
| 37 | 1.2.2.2.1 | Entrevistas con los usuarios | 5d | 2015-01-28 | 2015-02-03 |  | 342d |  |
| 38 | 1.2.2.2.2 | Diagramas documentales | 15d | 2015-01-28 | 2015-02-17 |  | 332d |  |
| 39 | 1.2.2.2.3 | Mapa de documentos | 15d | 2015-01-28 | 2015-02-17 |  | 332d |  |
| 40 | 1.2.2.2.4 | Formatos de servicios | 3d | 2015-01-28 | 2015-01-30 |  | 344d |  |
| 41 | 1.2.2.3 | **Personal** | 15d | 2015-02-18 | 2015-03-10 | 10 | 317d |  |
| 42 | 1.2.2.3.1 | Entrevistas con los usuarios | 5d | 2015-02-18 | 2015-02-24 |  | 327d |  |
| 43 | 1.2.2.3.2 | Diagramas documentales | 15d | 2015-02-18 | 2015-03-10 |  | 317d |  |
| 44 | 1.2.2.3.3 | Mapa de documentos | 15d | 2015-02-18 | 2015-03-10 |  | 317d |  |
| 45 | 1.2.2.3.4 | Formatos de servicios | 3d | 2015-02-18 | 2015-02-20 |  | 329d |  |
| 46 | 1.2.2.4 | **Presupuesto** | 15d | 2015-03-12 | 2015-04-01 | 15 | 301d |  |
| 47 | 1.2.2.4.1 | Entrevistas con los usuarios | 5d | 2015-03-12 | 2015-03-18 |  | 311d |  |
| 48 | 1.2.2.4.2 | Diagramas documentales | 15d | 2015-03-12 | 2015-04-01 |  | 301d |  |
| 49 | 1.2.2.4.3 | Mapa de documentos | 15d | 2015-03-12 | 2015-04-01 |  | 301d |  |
| 50 | 1.2.2.4.4 | Formatos de servicios | 3d | 2015-03-12 | 2015-03-16 |  | 313d |  |

| ID | WBS | Task | Type | Duration | Start | Finish | Predecessors | Total slack | Free slack | Constraint |
| --- | --- | --- | --- | --- | --- | --- | --- | --- | --- | --- |
| 51 | 1.2.2.5 | **Servicios Generales** |  | 15d | 2015-04-03 | 2015-04-23 | 20 | 285d |  |  |
| 52 | 1.2.2.5.1 | Entrevistas con los usuarios |  | 5d | 2015-04-03 | 2015-04-09 |  | 295d |  |  |
| 53 | 1.2.2.5.2 | Mapa de documentos |  | 15d | 2015-04-03 | 2015-04-23 |  | 285d |  |  |
| 54 | 1.2.2.5.3 | SUS |  | 5d | 2015-04-03 | 2015-04-09 |  | 295d |  |  |
| 55 | 1.2.2.5.4 | Diagramas documentales |  | 15d | 2015-04-03 | 2015-04-23 |  | 285d |  |  |
| 56 | 1.3 | Fin de análisis documental | milestone | 0d | 2015-04-24 | 2015-04-24 | 25 | 145d | 0d |  |
| 57 | 1.4 | **Sistema de gestión de documentos** |  | 284d | 2015-04-27 | 2016-05-26 |  | 0d |  |  |
| 58 | 1.4.1 | **Requermientos del sistema** |  | 99d | 2015-04-27 | 2015-09-10 |  | 145d |  |  |
| 59 | 1.4.1.1 | Documentación de requimientos |  | 90d | 2015-04-27 | 2015-08-28 | 56 | 145d | 0d |  |
| 60 | 1.4.1.2 | Validación de requerimientos |  | 9d | 2015-08-31 | 2015-09-10 | 59 | 145d | 0d |  |
| 61 | 1.4.1.3 | Fin de análisis de requerimientos | milestone | 0d | 2015-09-10 | 2015-09-10 | 60 | 145d | 0d |  |
| 62 | 1.4.2 | **Diseño** |  | 40d | 2015-09-11 | 2015-11-05 | 61 | 145d |  |  |
| 63 | 1.4.2.1 | Definición del framework |  | 5d | 2015-09-11 | 2015-09-17 | 61 | 145d | 0d |  |
| 64 | 1.4.2.2 | **Definición de arquitectura** |  | 5d | 2015-09-18 | 2015-09-24 |  | 145d |  |  |
| 65 | 1.4.2.2.1 | Identificación de perfiles |  | 5d | 2015-09-18 | 2015-09-24 | 63 | 175d |  |  |
| 66 | 1.4.2.2.2 | Identificación de módulos y funciones |  | 5d | 2015-09-18 | 2015-09-24 | 63 | 175d |  |  |
| 67 | 1.4.2.2.3 | Identificación de permisos |  | 5d | 2015-09-18 | 2015-09-24 | 63 | 145d | 0d |  |
| 68 | 1.4.2.3 | Diagramas de casos de uso |  | 30d | 2015-09-25 | 2015-11-05 | 67 | 145d |  |  |
| 69 | 1.4.2.4 | Diagramas de secuencia |  | 30d | 2015-09-25 | 2015-11-05 | 67 | 145d |  |  |
| 70 | 1.4.2.5 | Diseño de la interfaz |  | 30d | 2015-09-25 | 2015-11-05 | 67 | 145d | 0d |  |
| 71 | 1.4.2.6 | Fin del Diseño | milestone | 0d | 2015-11-05 | 2015-11-05 | 70 | 145d |  |  |
| 72 | 1.4.3 | **Desarrollo** |  | 164d | 2015-10-01 | 2016-05-17 |  | 0d |  |  |
| 73 | 1.4.3.1 | **Librerias** |  | 12d | 2015-10-01 | 2015-10-16 |  | 0d |  |  |
| 74 | 1.4.3.1.1 | De conexión |  | 2d | 2015-10-01 | 2015-10-02 |  | 0d |  | start no earlier than 2015-10-01 |
| 75 | 1.4.3.1.2 | Herramientas |  | 2d | 2015-10-05 | 2015-10-06 | 74 | 0d |  |  |
| 76 | 1.4.3.1.3 | Sesion |  | 2d | 2015-10-07 | 2015-10-08 | 75 | 0d |  |  |
| 77 | 1.4.3.1.4 | PDF |  | 3d | 2015-10-09 | 2015-10-13 | 76 | 0d |  |  |
| 78 | 1.4.3.1.5 | Correo electrónico |  | 3d | 2015-10-14 | 2015-10-16 | 77 | 0d |  |  |

| ID | WBS | Task | Type | Duration | Start | Finish | Predecessors | Total slack |
| --- | --- | --- | --- | --- | --- | --- | --- | --- |
| 79 | 1.4.3.2 | **Base de datos** |  | 5d | 2015-10-19 | 2015-10-23 | 73 | 147d |
| 80 | 1.4.3.2.1 | Diagrama entidad relacion |  | 5d | 2015-10-19 | 2015-10-23 |  | 147d |
| 81 | 1.4.3.2.2 | Diccionario de datos |  | 5d | 2015-10-19 | 2015-10-23 |  | 147d |
| 82 | 1.4.3.3 | **Estilos** |  | 5d | 2015-10-19 | 2015-10-23 | 73 | 0d |
| 83 | 1.4.3.3.1 | Hojas de estilos |  | 2d | 2015-10-19 | 2015-10-20 |  | 0d |
| 84 | 1.4.3.3.2 | Menues |  | 3d | 2015-10-21 | 2015-10-23 | 83 | 0d |
| 85 | 1.4.3.4 | Fin de framwork | milestone | 0d | 2015-10-23 | 2015-10-23 | 84 | 0d |
| 86 | 1.4.3.5 | **Módulos** |  | 147d | 2015-10-26 | 2016-05-17 | 85 | 0d |
| 87 | 1.4.3.5.1 | 1.Ingreso al sistema |  | 3d | 2015-10-26 | 2015-10-28 | 85 | 0d |
| 88 | 1.4.3.5.2 | **2.Bandejas de documentos** |  | 4d | 2015-10-29 | 2015-11-03 |  | 0d |
| 89 | 1.4.3.5.2.1 | a.Repeción de turno digital |  | 2d | 2015-10-29 | 2015-10-30 | 87 | 0d |
| 90 | 1.4.3.5.2.2 | b.Documentos atendidos |  | 2d | 2015-11-02 | 2015-11-03 | 89 | 0d |
| 91 | 1.4.3.5.3 | **3.Documentos** |  | 23d | 2015-11-04 | 2015-12-04 |  | 0d |
| 92 | 1.4.3.5.3.1 | a.Recepción de documentos |  | 3d | 2015-11-04 | 2015-11-06 | 90 | 0d |
| 93 | 1.4.3.5.3.2 | b.Integración de documentos al expediente |  | 3d | 2015-11-09 | 2015-11-11 | 92 | 0d |
| 94 | 1.4.3.5.3.3 | **c.Folios de salida** |  | 6d | 2015-11-12 | 2015-11-19 |  | 0d |
| 95 | 1.4.3.5.3.3.1 | i.Nuevo expediente |  | 3d | 2015-11-12 | 2015-11-16 | 93 | 0d |
| 96 | 1.4.3.5.3.3.2 | ii.En respuesta a oficio |  | 3d | 2015-11-17 | 2015-11-19 | 95 | 0d |
| 97 | 1.4.3.5.3.4 | d.Adjuntar documento digital |  | 2d | 2015-11-20 | 2015-11-23 | 96 | 0d |
| 98 | 1.4.3.5.3.5 | **e.Remisión de asuntos** |  | 5d | 2015-11-24 | 2015-11-30 |  | 0d |
| 99 | 1.4.3.5.3.5.1 | i.Turno digital |  | 4d | 2015-11-24 | 2015-11-27 | 97 | 0d |
| 100 | 1.4.3.5.3.5.2 | ii.Reporte entrega-recepción de documentos físicos |  | 1d | 2015-11-30 | 2015-11-30 | 99 | 0d |
| 101 | 1.4.3.5.3.6 | f.Modificar documento |  | 4d | 2015-12-01 | 2015-12-04 | 100 | 0d |
| 102 | 1.4.3.5.4 | **4.Control y seguimiento** |  | 18d | 2015-12-07 | 2015-12-30 |  | 0d |
| 103 | 1.4.3.5.4.1 | a.Estado del trámite |  | 10d | 2015-12-07 | 2015-12-18 | 101 | 0d |
| 104 | 1.4.3.5.4.2 | b.Integración de documentos al expediente |  | 5d | 2015-12-21 | 2015-12-25 | 103 | 0d |
| 105 | 1.4.3.5.4.3 | c.Cancelación de trámites |  | 3d | 2015-12-28 | 2015-12-30 | 104 | 0d |

| ID | WBS | Task | Duration | Start | Finish | Predecessors | Total slack |
| --- | --- | --- | --- | --- | --- | --- | --- |
| 106 | 1.4.3.5.5 | **5.Expedientes** | 16d | 2015-12-31 | 2016-01-21 |  | 0d |
| 107 | 1.4.3.5.5.1 | a.Cierre del expediente | 3d | 2015-12-31 | 2016-01-04 | 105 | 0d |
| 108 | 1.4.3.5.5.2 | b.Modificar expediente | 3d | 2016-01-05 | 2016-01-07 | 107 | 0d |
| 109 | 1.4.3.5.5.3 | c.Consolidación de expedientes | 5d | 2016-01-08 | 2016-01-14 | 108 | 0d |
| 110 | 1.4.3.5.5.4 | d.Traslado de expedientes | 3d | 2016-01-15 | 2016-01-19 | 109 | 0d |
| 111 | 1.4.3.5.5.5 | e.Inventarios | 2d | 2016-01-20 | 2016-01-21 | 110 | 0d |
| 112 | 1.4.3.5.6 | **6.Búsqueda** | 9d | 2016-01-22 | 2016-02-03 |  | 0d |
| 113 | 1.4.3.5.6.1 | a.Por índices | 3d | 2016-01-22 | 2016-01-26 | 111 | 0d |
| 114 | 1.4.3.5.6.2 | b.Por expediente | 3d | 2016-01-27 | 2016-01-29 | 113 | 0d |
| 115 | 1.4.3.5.6.3 | c.Por documento | 3d | 2016-02-01 | 2016-02-03 | 114 | 0d |
| 116 | 1.4.3.5.7 | **7.Reportes** | 12d | 2016-02-04 | 2016-02-19 |  | 0d |
| 117 | 1.4.3.5.7.1 | a.Inventario de documentos | 2d | 2016-02-04 | 2016-02-05 | 115 | 0d |
| 118 | 1.4.3.5.7.2 | b.Expedientes en trámite | 2d | 2016-02-08 | 2016-02-09 | 117 | 0d |
| 119 | 1.4.3.5.7.3 | c.Indicadores de SGC | 2d | 2016-02-10 | 2016-02-11 | 118 | 0d |
| 120 | 1.4.3.5.7.4 | d.Estadísticas SAD | 2d | 2016-02-12 | 2016-02-15 | 119 | 0d |
| 121 | 1.4.3.5.7.5 | e.Estadísticas para la Dirección | 2d | 2016-02-16 | 2016-02-17 | 120 | 0d |
| 122 | 1.4.3.5.7.6 | f.Listado de circulares | 2d | 2016-02-18 | 2016-02-19 | 121 | 0d |
| 123 | 1.4.3.5.8 | **8.Administración** | 28d | 2016-02-22 | 2016-03-30 |  | 0d |
| 124 | 1.4.3.5.8.1 | a.De nombres y tipos documentales | 4d | 2016-02-22 | 2016-02-25 | 122 | 0d |
| 125 | 1.4.3.5.8.2 | b.De documentos en procedimientos | 4d | 2016-02-26 | 2016-03-02 | 124 | 0d |
| 126 | 1.4.3.5.8.3 | c.De procedimientos | 12d | 2016-03-03 | 2016-03-18 | 125 | 0d |
| 127 | 1.4.3.5.8.4 | d.Del catálogo de servicios | 4d | 2016-03-21 | 2016-03-24 | 126 | 0d |
| 128 | 1.4.3.5.8.5 | e.De formatos de solicitudes | 4d | 2016-03-25 | 2016-03-30 | 127 | 0d |
| 129 | 1.4.3.5.9 | **9.Ayuda** | 10d | 2016-03-31 | 2016-04-13 |  | 0d |
| 130 | 1.4.3.5.9.1 | a.Cuadro general de clasificación archivística | 1d | 2016-03-31 | 2016-03-31 | 128 | 0d |
| 131 | 1.4.3.5.9.2 | b.Catálogo de servicios | 1d | 2016-04-01 | 2016-04-01 | 130 | 0d |
| 132 | 1.4.3.5.9.3 | c.Formato de solicitudes | 2d | 2016-04-04 | 2016-04-05 | 131 | 0d |
| 133 | 1.4.3.5.9.4 | d.Manuales de usuario | 1d | 2016-04-06 | 2016-04-06 | 132 | 0d |
| 134 | 1.4.3.5.9.5 | e.Gestión de la cuenta y recuperación de contraseña | 4d | 2016-04-07 | 2016-04-12 | 133 | 0d |
| 135 | 1.4.3.5.9.6 | f.Acerca de | 1d | 2016-04-13 | 2016-04-13 | 134 | 0d |

| ID | WBS | Task | Duration | Start | Finish | Predecessors | Total slack | Free slack |
| --- | --- | --- | --- | --- | --- | --- | --- | --- |
| 136 | 1.4.3.5.10 | **10.Administración del sistema** | 24d | 2016-04-14 | 2016-05-17 |  | 0d |  |
| 137 | 1.4.3.5.10.1 | a.De usuarios y permisos | 4d | 2016-04-14 | 2016-04-19 | 135 | 0d |  |
| 138 | 1.4.3.5.10.2 | b.Catálogos | 4d | 2016-04-20 | 2016-04-25 | 137 | 0d |  |
| 139 | 1.4.3.5.10.3 | c.Manuales de usuario | 2d | 2016-04-26 | 2016-04-27 | 138 | 0d |  |
| 140 | 1.4.3.5.10.4 | d.Gestión de la cuenta | 4d | 2016-04-28 | 2016-05-03 | 139 | 0d |  |
| 141 | 1.4.3.5.10.5 | e.Registro de acciones de usuario | 5d | 2016-05-04 | 2016-05-10 | 140 | 0d |  |
| 142 | 1.4.3.5.10.6 | f.Respaldos de documentos | 5d | 2016-05-11 | 2016-05-17 | 141 | 0d |  |
| 143 | 1.4.3.6 | **Validación** | 30d | 2015-10-26 | 2015-12-04 |  | 109d | 0d |
| 144 | 1.4.3.6.1 | Por función (X) | 30d | 2015-10-26 | 2015-12-04 | 84 | 109d | 0d |
| 145 | 1.4.3.7 | **Carga de información** | 6d | 2015-12-07 | 2015-12-14 |  | 111d |  |
| 146 | 1.4.3.7.1 | Catálogo de responsables | 2d | 2015-12-07 | 2015-12-08 | 144 | 111d | 0d |
| 147 | 1.4.3.7.2 | Catálogo de dependencias | 2d | 2015-12-09 | 2015-12-10 | 146 | 111d | 0d |
| 148 | 1.4.3.7.3 | Alta de procedimientos | 2d | 2015-12-11 | 2015-12-14 | 147 | 111d |  |
| 149 | 1.4.4 | **Pruebas** | 117d | 2015-12-07 | 2016-05-17 |  | 7d |  |
| 150 | 1.4.4.1 | **Unitarias** | 15d | 2015-12-07 | 2015-12-25 |  | 109d |  |
| 151 | 1.4.4.1.1 | Pruebas por funcón de módulo | 15d | 2015-12-07 | 2015-12-25 | 143 | 109d |  |
| 152 | 1.4.4.2 | **De integración** | 15d | 2015-12-07 | 2015-12-25 |  | 109d |  |
| 153 | 1.4.4.2.1 | Pruebas por módulo | 15d | 2015-12-07 | 2015-12-25 | 143 | 109d |  |
| 154 | 1.4.4.3 | **Aceptación** | 5d | 2016-05-11 | 2016-05-17 |  | 0d |  |
| 155 | 1.4.4.3.1 | Por módulo | 5d | 2016-05-11 | 2016-05-17 | 87, 72FF | 0d |  |
| 156 | 1.4.5 | **Manuales** | 4.8d | 2016-05-18 | 2016-05-24 | 86 | 2.2d |  |
| 157 | 1.4.5.1 | **Manual de usuario** | 3.2d | 2016-05-18 | 2016-05-23 |  | 2.2d |  |
| 158 | 1.4.5.1.1 | Recepción | 0.8d | 2016-05-18 | 2016-05-18 | 155 | 2.2d | 0d |
| 159 | 1.4.5.1.2 | Jefe de departamento | 0.6d | 2016-05-18 | 2016-05-19 | 158 | 2.2d | 0d |
| 160 | 1.4.5.1.3 | Secreatario Administrativo | 0.6d | 2016-05-19 | 2016-05-19 | 159 | 2.2d | 0d |
| 161 | 1.4.5.1.4 | Director | 0.6d | 2016-05-20 | 2016-05-20 | 160 | 2.2d | 0d |
| 162 | 1.4.5.1.5 | Auditor | 0.6d | 2016-05-20 | 2016-05-23 | 161 | 2.2d | 0d |
| 163 | 1.4.5.2 | Manual técnico | 0.8d | 2016-05-23 | 2016-05-23 | 162 | 2.2d | 0d |
| 164 | 1.4.5.3 | Maual de administración | 0.8d | 2016-05-24 | 2016-05-24 | 163 | 2.2d |  |

| ID | WBS | Task | Type | Duration | Start | Finish | Predecessors | Total slack |
| --- | --- | --- | --- | --- | --- | --- | --- | --- |
| 165 | 1.4.6 | **Migración** |  | 5d | 2016-05-18 | 2016-05-24 | 86 | 0d |
| 166 | 1.4.6.1 | Instalar servidor |  | 1d | 2016-05-18 | 2016-05-18 | 155 | 0d |
| 167 | 1.4.6.2 | Instalar sistema |  | 1d | 2016-05-19 | 2016-05-19 | 166 | 0d |
| 168 | 1.4.6.3 | Poblar base |  | 1d | 2016-05-20 | 2016-05-20 | 167 | 0d |
| 169 | 1.4.6.4 | Pruebas finales |  | 2d | 2016-05-23 | 2016-05-24 | 168 | 0d |
| 170 | 1.4.7 | **Transferencia** |  | 2d | 2016-05-25 | 2016-05-26 | 165 | 0d |
| 171 | 1.4.7.1 | **Entrega** |  | 1d | 2016-05-25 | 2016-05-25 | 165 | 0d |
| 172 | 1.4.7.1.1 | Presentación |  | 1d | 2016-05-25 | 2016-05-25 | 169 | 0d |
| 173 | 1.4.7.2 | **Capacitación** |  | 1d | 2016-05-26 | 2016-05-26 | 165 | 0d |
| 174 | 1.4.7.2.1 | Recepción |  | 1d | 2016-05-26 | 2016-05-26 | 172 | 0d |
| 175 | 1.4.7.2.2 | Jefes Departamento |  | 1d | 2016-05-26 | 2016-05-26 | 172 | 0d |
| 176 | 1.4.7.2.3 | Secretarios |  | 1d | 2016-05-26 | 2016-05-26 | 172 | 0d |
| 177 | 1.4.7.2.4 | Director |  | 1d | 2016-05-26 | 2016-05-26 | 172 | 0d |
| 178 | 1.4.7.2.5 | Administrador |  | 1d | 2016-05-26 | 2016-05-26 | 172 | 0d |
| 179 | 1.4.7.2.6 | Entrega de documentación al administrador | milestone | 0d | 2016-05-26 | 2016-05-26 | 178 | 0d |
| 180 | 2 | Fin del proyecto | milestone | 0d | 2016-05-26 | 2016-05-26 | 179 | 0d |
